# Tareas

Schedule from MS Project, 2017-03-24 to 2017-09-07.

## Calendars

- Estándar: Mon-Fri 09:00-13:00, 15:00-19:00; Sat-Sun off.

## Schedule

| ID | WBS | Task | Type | Duration | Start | Finish | Predecessors | Total slack | Free slack |
| --- | --- | --- | --- | --- | --- | --- | --- | --- | --- |
| 1 | 1 | **TOTAL PROYECTO** |  | 120d | 2017-03-24 | 2017-09-07 |  | 0d |  |
| 2 | 1.1 | **FASE 1: PREPARACION PARA LA FORMULACION** |  | 26d | 2017-03-24 | 2017-04-28 |  | 0d |  |
| 3 | 1.1.1 | INICIO | milestone | 0d | 2017-03-24 | 2017-03-24 |  | 0d |  |
| 4 | 1.1.2 | TERMINOS DE REFERENCIA. Objetivos. Condicionantes del Promotor |  | 10d | 2017-03-24 | 2017-04-06 | 3 | 0d |  |
| 5 | 1.1.3 | FINANCIACION |  | 7d | 2017-03-24 | 2017-04-03 | 3 | 98d | 0d |
| 6 | 1.1.4 | COMITÉ DE COORDINACION. Constitución y organización |  | 5d | 2017-03-24 | 2017-03-30 | 3 | 115d |  |
| 7 | 1.1.5 | EQUIPO DE FORMULACION. Recursos humanos y técnicos |  | 15d | 2017-04-04 | 2017-04-24 | 5 | 98d |  |
| 8 | 1.1.6 | METODOLOGIA Y PLAN DE TRABAJO |  | 10d | 2017-04-07 | 2017-04-20 | 4 | 0d |  |
| 9 | 1.1.7 | DOC. Nº1: Fin P.F. |  | 5d | 2017-04-21 | 2017-04-27 | 8 | 0d |  |
| 10 | 1.1.8 | Entrega al PROMOTOR. Doc. nº1 | milestone | 0d | 2017-04-27 | 2017-04-27 | 9 | 0d |  |
| 11 | 1.1.9 | SEMINARIO DE LANZAMIENTO DEL PROYECTO |  | 1d | 2017-04-28 | 2017-04-28 | 10 | 0d |  |
| 12 | 1.2 | **FASE 2: ANALISIS Y DIAGNOSTICO** |  | 94d | 2017-05-01 | 2017-09-07 |  | 0d |  |
| 13 | 1.2.1 | **ANALISIS ANTECEDENTES** |  | 15d | 2017-05-01 | 2017-05-19 | 11 | 0d |  |
| 14 | 1.2.1.1 | POLITICAS Y PROGRAMAS |  | 10d | 2017-05-01 | 2017-05-12 | 11 | 59d | 52d |
| 15 | 1.2.1.2 | MARCO LEGAL |  | 15d | 2017-05-01 | 2017-05-19 | 11 | 54d | 47d |
| 16 | 1.2.1.3 | BASES DE DATOS EXISTENTES |  | 7d | 2017-05-01 | 2017-05-09 | 11 | 0d |  |
| 17 | 1.2.2 | **ANALISIS DEL AREA DEL PROYECTO** |  | 80d | 2017-05-10 | 2017-08-29 | 11, 16 | 0d |  |
| 18 | 1.2.2.1 | ANALISIS DE RECURSOS NATURALES. INVENTARIO AMBIENTAL |  | 35d | 2017-05-10 | 2017-06-27 |  | 7d | 0d |
| 19 | 1.2.2.2 | INFRAESTRUCTURAS Y SERVICIOS |  | 20d | 2017-06-28 | 2017-07-25 | 18 | 7d | 0d |
| 20 | 1.2.2.3 | ANALISIS DE SECTORES PRODUCTIVOS |  | 25d | 2017-07-26 | 2017-08-29 | 14, 13, 15, 19 | 7d |  |
| 21 | 1.2.2.4 | ANALISIS POBLACIONAL |  | 20d | 2017-05-10 | 2017-06-06 |  | 67d |  |
| 22 | 1.2.2.5 | SISTEMA GENERAL TERRITORIAL DE INFORMACION |  | 21d | 2017-05-10 | 2017-06-07 | 16 | 0d |  |
| 23 | 1.2.3 | **ANALISIS DE AGENTES Y PARTICIPACION** |  | 82d | 2017-05-17 | 2017-09-07 |  | 0d |  |
| 24 | 1.2.3.1 | IDENTIFICACIÓN DE AGENTES Y TIPOLOGIA |  | 10d | 2017-05-17 | 2017-05-30 | 22SS+5d | 0d |  |
| 25 | 1.2.3.2 | ANALISIS DE LA PARTICIPACIÓN: ENCUESTA CON LOS AGENTES |  | 60d | 2017-05-31 | 2017-08-22 | 24 | 0d |  |
| 26 | 1.2.3.3 | TALLER DE PARTICIPACIÓN AGENTES PUBLICOS |  | 1d | 2017-06-14 | 2017-06-14 | 25SS+10d | 43d | 0d |
| 27 | 1.2.3.4 | ANALISIS PROSPECTIVO "SIN" |  | 6d | 2017-06-15 | 2017-06-22 | 26 | 43d |  |
| 28 | 1.2.3.5 | INFORME DE PARTICIPACION: Problemas, necesidades, oportunidades |  | 10d | 2017-08-23 | 2017-09-05 | 27, 25 | 0d |  |
| 29 | 1.2.3.6 | PRESENTACIÓN Y VALIDACION DE CONCLUSIONES |  | 2d | 2017-09-06 | 2017-09-07 | 28 | 0d |  |
| 30 | 1.2.4 | CONCLUSIONES Y Doc. Nº2. Presentación al PROMOTOR | milestone | 0d | 2017-09-07 | 2017-09-07 | 29 | 0d |  |
| 31 | 1.2.5 | Doc. nº2. REVISIÓN POR EL PROMOTOR | milestone | 0d | 2017-09-07 | 2017-09-07 | 29, 30 | 0d |  |
